# 2025产品研发整体进度计划

How a schedule from a web Gantt chart changed from version to version. A marks actual dates.

## Version 1 (saved 2025-01-03)

| ID | WBS | Task | Duration | Start | Finish | Complete |
| --- | --- | --- | --- | --- | --- | --- |
| 2 |  | 3.6.1开发 | 21d | 2024-12-06 | 2025-01-03 | 90% |
| 3 | 2 | **成都院交付（引擎层）** | 85d | 2024-10-14 | 2025-02-07 | 66% |
| 4 | 2.1 | **离线查看器** | 65d | 2024-10-14 | 2025-01-10 | 91% |
| 5 |  | 离线查看客户端 | 65d | 2024-10-14 | 2025-01-10 | 90% |
| 6 |  | 离线包导出功能（平台） | 15d | 2024-12-23 | 2025-01-10 | 95% |
| 7 | 2.2 | **操作优化** | 15d | 2025-01-20 | 2025-02-07 |  |
| 8 |  | 三点对位 | 5d | 2025-01-20 | 2025-01-24 |  |
| 9 |  | 面夹角测量 | 2d | 2025-01-27 | 2025-01-28 |  |
| 10 |  | 面距离测量 | 3d | 2025-02-05 | 2025-02-07 |  |
| 11 | 2.3 | **3.6.1.1发布** | 15d | 2025-01-06 | 2025-01-24 |  |
| 12 |  | 历史版本目录树和属性 | 15d | 2025-01-06 | 2025-01-24 |  |
| 13 | 3 | **公路院课题交付** | 109d | 2025-01-03 | 2025-06-04 |  |
| 14 |  | 地形系统的多坐标系兼容改造 | 20d | 2025-01-03 | 2025-01-30 |  |
| 15 |  | wms、wmts服务的直接接入 | 20d | 2025-02-10 | 2025-03-07 |  |
| 16 |  | 全局矢量的点线面绘制（贴地矢量） | 3d | 2025-03-10 | 2025-03-12 |  |
| 17 |  | 获取干系瓦片的最高精度数据并重采样 | 7d | 2025-03-13 | 2025-03-21 |  |
| 18 |  | 相机2D锁定和地上锁定 | 2d | 2025-03-24 | 2025-03-25 |  |
| 19 |  | 模型不被地形遮挡的绘制模式 | 1d | 2025-03-26 | 2025-03-26 |  |
| 20 |  | gis天际线、通视分析等功能 | 30d | 2025-03-27 | 2025-05-07 |  |
| 21 |  | 矢量瓦片的接入（基础解析）-扩展 | 15d | 2025-05-15 | 2025-06-04 |  |
| 22 | 4 | **云渲染交付** | 70d | 2024-10-14 | 2025-01-17 |  |
| 23 |  | 云渲染基础部分完善 | 20d | 2024-12-23 | 2025-01-17 |  |
| 24 |  | 云渲染服务器组件开发 | 1d | 2024-10-14 | 2024-10-14 |  |
| 25 |  | 云渲染接口层实现 | 1d | 2024-10-14 | 2024-10-14 |  |
| 26 | 5 | **粒子系统（引擎模块）** | 15d | 2024-12-30 | 2025-01-17 |  |
| 27 |  | 水粒子更新改为GPU管线 | 5d | 2024-12-30 | 2025-01-03 |  |
| 28 |  | 烟雾和火焰 | 10d | 2025-01-06 | 2025-01-17 |  |
| 29 | 6 | **动画系统** | 1d | 2024-10-14 | 2024-10-14 |  |
| 30 |  | 场景爆炸效果的优化 | 1d | 2024-10-14 | 2024-10-14 |  |
| 31 |  | 列车汽车路径动画的封装 | 1d | 2024-10-14 | 2024-10-14 |  |
| 32 |  | 动画编辑器的实现 | 1d | 2024-10-14 | 2024-10-14 |  |
| 33 |  | 触发器系统的实现 | 1d | 2024-10-14 | 2024-10-14 |  |
| 34 | 7 | **3.6.2版本开发** | 1d | 2024-10-14 | 2024-10-14 |  |
| 35 |  | 水面、单体化、开挖 | 1d | 2024-10-14 | 2024-10-14 |  |
| 36 |  | 单构件编辑 | 1d | 2024-10-14 | 2024-10-14 |  |
| 37 |  | 粒子编辑 | 1d | 2024-10-14 | 2024-10-14 |  |
| 38 |  | 点光源编辑 | 1d | 2024-10-14 | 2024-10-14 |  |
| 39 | 8 | **3.6.3版本开发** | 1d | 2024-10-14 | 2024-10-14 |  |
| 40 |  | 动画交互编辑 | 1d | 2024-10-14 | 2024-10-14 |  |
| 41 |  | 3DTiles数据的连通性扩展 | 40d | 2025-01-02 | 2025-02-26 |  |
| 42 |  | 移动端app中目录树，属性等的实现 | 1d | 2024-10-14 | 2024-10-14 |  |
| 43 |  | 移动端app跟平台账户的数据对接 | 1d | 2024-10-14 | 2024-10-14 |  |
| 44 |  | 平台功能模块JS再封装 | 1d | 2024-10-14 | 2024-10-14 |  |
| 45 |  | 平台页面的嵌入式需求 | 1d | 2024-10-14 | 2024-10-14 |  |
| 46 | 14 | **BIM分析** | 1d | 2024-10-14 | 2024-10-14 |  |
| 47 |  | 构件的碰撞检查 | 1d | 2024-10-14 | 2024-10-14 |  |
| 48 |  | 卷帘对比 | 1d | 2024-10-14 | 2024-10-14 |  |
| 49 | 15 | **开发者中心的完善** | 1d | 2024-10-14 | 2024-10-14 |  |
| 50 |  | 单功能demo的完善 | 1d | 2024-10-14 | 2024-10-14 |  |
| 51 |  | 面向业务场景的集成化demo的制作 | 1d | 2024-10-14 | 2024-10-14 |  |
| 52 |  | sqlSugar的读写分离实现 | 1d | 2024-10-14 | 2024-10-14 |  |
| 53 |  | FTP方式下载、上传用于转换 | 1d | 2024-10-14 | 2024-10-14 |  |
| 54 |  | appFiles.sig的全体用户更新 | 1d | 2024-10-14 | 2024-10-14 |  |
| 55 |  | WebGPU 多材质、指定材质的研究 | 1d | 2024-10-14 | 2024-10-14 |  |
| 56 | 20 | **AIGC** | 1d | 2024-10-14 | 2024-10-14 |  |
| 57 |  | 静帧画质增强 | 1d | 2024-10-14 | 2024-10-14 |  |
| 58 |  | 接入文生模、图生模等功能 | 1d | 2024-10-14 | 2024-10-14 |  |
| 59 |  | 虚拟设备的对接 | 1d | 2024-10-14 | 2024-10-14 |  |
| 60 |  | 物理仿真--科委课题的研究 | 1d | 2024-10-14 | 2024-10-14 |  |
| 61 |  | 离线查看器的二开支持 | 1d | 2024-10-14 | 2024-10-14 |  |
| 62 |  | 3.5.1中延后实现的矢量样式配置功能 | 1d | 2024-10-14 | 2024-10-14 |  |

## Version 2 (saved 2025-01-03)

Last finish 2025-06-04 → 2025-08-29 (+86d).

Added:

| ID | Task | Duration | Start | Finish |
| --- | --- | --- | --- | --- |
| 25 | 使用云渲染模式的前端页面开发 | 5d | 2025-01-13 | 2025-01-17 |
| 30 | **动画系统引擎层** | 65d | 2025-01-13 | 2025-04-11 |
| 47 | 构件的碰撞检查（算法设计） | 3d | 2025-04-01 | 2025-04-03 |
| 48 | 构件碰撞计算的模板程序 | 5d | 2025-04-14 | 2025-04-18 |

Removed: 29 动画系统; 32 动画编辑器的实现; 47 构件的碰撞检查

Changed:

| ID | Task | Start | Finish | Duration | Complete |
| --- | --- | --- | --- | --- | --- |
| 3 | **成都院交付（引擎层）** |  |  |  | 66% → 26% |
| 22 | **云渲染交付** | 2024-10-14 → 2024-12-23 (+70d) | 2025-01-17 → 2025-03-04 (+46d) | 70d → 52d |  |
| 24 | 云渲染服务器组件开发 | 2024-10-14 → 2024-12-30 (+77d) | 2024-10-14 → 2025-01-17 (+95d) | 1d → 15d |  |
| 26 | 云渲染接口层实现 | 2024-10-14 → 2025-02-05 (+114d) | 2024-10-14 → 2025-03-04 (+141d) | 1d → 20d |  |
| 31 | 场景爆炸效果的优化 | 2024-10-14 → 2025-01-13 (+91d) | 2024-10-14 → 2025-02-07 (+116d) | 1d → 20d |  |
| 32 | 列车汽车路径动画的封装 | 2024-10-14 → 2025-02-24 (+133d) | 2024-10-14 → 2025-03-14 (+151d) | 1d → 15d |  |
| 33 | 触发器系统的实现 | 2024-10-14 → 2025-03-17 (+154d) | 2024-10-14 → 2025-04-11 (+179d) | 1d → 20d |  |
| 34 | **3.6.2版本开发** | 2024-10-14 → 2025-02-10 (+119d) | 2024-10-14 → 2025-04-18 (+186d) | 1d → 50d |  |
| 35 | 水面、单体化、开挖 | 2024-10-14 → 2025-02-10 (+119d) | 2024-10-14 → 2025-02-21 (+130d) | 1d → 10d |  |
| 36 | 单构件编辑 | 2024-10-14 → 2025-02-26 (+135d) | 2024-10-14 → 2025-03-11 (+148d) | 1d → 10d |  |
| 37 | 粒子编辑 | 2024-10-14 → 2025-03-17 (+154d) | 2024-10-14 → 2025-03-28 (+165d) | 1d → 10d |  |
| 38 | 点光源编辑 | 2024-10-14 → 2025-04-07 (+175d) | 2024-10-14 → 2025-04-18 (+186d) | 1d → 10d |  |
| 39 | **3.6.3版本开发** | 2024-10-14 → 2025-05-12 (+210d) | 2024-10-14 → 2025-07-04 (+263d) | 1d → 40d |  |
| 40 | 动画交互编辑 | 2024-10-14 → 2025-05-12 (+210d) | 2024-10-14 → 2025-07-04 (+263d) | 1d → 40d |  |
| 42 | 移动端app中目录树，属性等的实现 | 2024-10-14 → 2025-03-10 (+147d) | 2024-10-14 → 2025-04-04 (+172d) | 1d → 20d |  |
| 43 | 移动端app跟平台账户的数据对接 | 2024-10-14 → 2025-04-10 (+178d) | 2024-10-14 → 2025-04-23 (+191d) | 1d → 10d |  |
| 44 | 平台功能模块JS再封装 | 2024-10-14 → 2025-07-07 (+266d) | 2024-10-14 → 2025-08-01 (+291d) | 1d → 20d |  |
| 45 | 平台页面的嵌入式需求 | 2024-10-14 → 2025-08-04 (+294d) | 2024-10-14 → 2025-08-29 (+319d) | 1d → 20d |  |
| 46 | **BIM分析** | 2024-10-14 → 2025-04-01 (+169d) | 2024-10-14 → 2025-06-11 (+240d) | 1d → 52d |  |
| 49 | 卷帘对比 | 2024-10-14 → 2025-06-09 (+238d) | 2024-10-14 → 2025-06-11 (+240d) | 1d → 3d |  |
| 50 | **开发者中心的完善** | 2024-10-14 → 2025-05-01 (+199d) | 2024-10-14 → 2025-05-08 (+206d) | 1d → 6d |  |
| 51 | 单功能demo的完善 | 2024-10-14 → 2025-05-01 (+199d) | 2024-10-14 → 2025-05-08 (+206d) | 1d → 6d |  |
| 52 | 面向业务场景的集成化demo的制作 | 2024-10-14 → 2025-05-01 (+199d) | 2024-10-14 → 2025-05-08 (+206d) | 1d → 6d |  |
| 53 | sqlSugar的读写分离实现 | 2024-10-14 → 2025-02-10 (+119d) | 2024-10-14 → 2025-02-14 (+123d) | 1d → 5d |  |
| 54 | FTP方式下载、上传用于转换 | 2024-10-14 → 2025-02-17 (+126d) | 2024-10-14 → 2025-02-21 (+130d) | 1d → 5d |  |
| 55 | appFiles.sig的全体用户更新 | 2024-10-14 → 2025-05-01 (+199d) | 2024-10-14 → 2025-05-02 (+200d) | 1d → 2d |  |
| 56 | WebGPU 多材质、指定材质的研究 | 2024-10-14 → 2025-02-17 (+126d) | 2024-10-14 → 2025-03-28 (+165d) | 1d → 30d |  |
| 57 | **AIGC** | 2024-10-14 → 2025-03-10 (+147d) | 2024-10-14 → 2025-06-06 (+235d) | 1d → 65d |  |
| 58 | 静帧画质增强 | 2024-10-14 → 2025-03-10 (+147d) | 2024-10-14 → 2025-04-04 (+172d) | 1d → 20d |  |
| 59 | 接入文生模、图生模等功能 | 2024-10-14 → 2025-04-14 (+182d) | 2024-10-14 → 2025-06-06 (+235d) | 1d → 40d |  |
| 60 | 虚拟设备的对接 | 2024-10-14 → 2025-05-12 (+210d) | 2024-10-14 → 2025-05-30 (+228d) | 1d → 15d |  |
| 61 | 物理仿真--科委课题的研究 | 2024-10-14 → 2025-04-28 (+196d) | 2024-10-14 → 2025-07-18 (+277d) | 1d → 60d |  |
| 62 | 离线查看器的二开支持 | 2024-10-14 → 2025-03-03 (+140d) | 2024-10-14 → 2025-03-28 (+165d) | 1d → 20d |  |
| 63 | 3.5.1中延后实现的矢量样式配置功能 | 2024-10-14 → 2025-07-14 (+273d) | 2024-10-14 → 2025-08-01 (+291d) | 1d → 15d |  |

## Version 3 (saved 2025-02-10)

Last finish stays 2025-08-29.

Added:

| ID | Task | Duration | Start | Finish |
| --- | --- | --- | --- | --- |
| 13 | **中冶京诚1期优化** | 1d | 2025-01-03 | 2025-01-03 |
| 14 | dgn相关优化 | 1d | 2025-01-03 | 2025-01-03 |
| 15 | 服务端相关优化 | 1d | 2025-01-03 | 2025-01-03 |

Changed:

| ID | Task | Complete |
| --- | --- | --- |
| 3 | **成都院交付（引擎层）** | 26% → 24% |

## Version 4 (saved 2025-02-11)

Last finish stays 2025-08-29.

Added:

| ID | Task | Duration | Start | Finish |
| --- | --- | --- | --- | --- |
| 3 | **ARM64架构下的跨平台编译** | 16d | 2025-02-10 | 2025-03-03 |
| 4 | sz-ifc在arm下的编译 | 9d | 2025-02-10 | 2025-02-20 |
| 5 | revit插件在arm下的模块编译 | 6d | 2025-02-21 | 2025-02-28 |
| 6 | 平台调用方式的修改 | 16d | 2025-02-10 | 2025-03-03 |
| 15 | **3.6.1.3发布** | 50d | 2025-01-06 | 2025-03-14 |
| 17 | 前端界面的改动 | 1d | 2025-01-06 | 2025-01-06 |
| 23 | **中铁12局主动同步项目的需求** | 13d | 2025-02-11 | 2025-02-27 |
| 24 | 需求设计 | 3d | 2025-02-11 | 2025-02-13 |
| 25 | 前端的开发 | 10d | 2025-02-14 | 2025-02-27 |
| 26 | 后端的开发 | 10d | 2025-02-14 | 2025-02-27 |
| 51 | 基础工具版产品的封装 | 1d | 2025-05-12 | 2025-05-12 |
| 73 | 开发者中心接入AI | 1d | 2025-04-14 | 2025-04-14 |

Removed: 11 3.6.1.1发布

Changed:

| ID | Task | Start | Finish | Duration | Complete |
| --- | --- | --- | --- | --- | --- |
| 7 | **成都院交付（引擎层）** |  | 2025-02-07 → 2025-03-14 (+35d) | 85d → 110d | 24% → 51% |
| 11 | **操作优化** | 2025-01-20 → 2025-02-05 (+16d) | 2025-02-07 → 2025-02-21 (+14d) | 15d → 13d |  |
| 12 | 三点对位 | 2025-01-20 → 2025-02-05 (+16d) | 2025-01-24 → 2025-02-14 (+21d) | 5d → 8d |  |
| 13 | 面夹角测量 | 2025-01-27 → 2025-02-17 (+21d) | 2025-01-28 → 2025-02-18 (+21d) |  |  |
| 14 | 面距离测量 | 2025-02-05 → 2025-02-19 (+14d) | 2025-02-07 → 2025-02-21 (+14d) |  |  |
| 16 | 历史版本目录树和属性 |  | 2025-01-24 → 2025-03-14 (+49d) | 15d → 50d |  |
| 27 | **中冶京诚1期优化** | 2025-01-03 → 2025-02-11 (+39d) | 2025-01-03 → 2025-02-13 (+41d) | 1d → 3d |  |
| 28 | dgn相关优化 | 2025-01-03 → 2025-02-11 (+39d) | 2025-01-03 → 2025-02-13 (+41d) | 1d → 3d |  |
| 29 | 服务端相关优化 | 2025-01-03 → 2025-02-11 (+39d) | 2025-01-03 → 2025-02-13 (+41d) | 1d → 3d |  |
| 30 | **公路院课题交付** | 2025-01-03 → 2025-02-05 (+33d) |  | 109d → 86d |  |
| 31 | 地形系统的多坐标系兼容改造 | 2025-01-03 → 2025-02-05 (+33d) | 2025-01-30 → 2025-03-04 (+33d) |  |  |
| 32 | wms、wmts服务的直接接入 | 2025-02-10 → 2025-02-21 (+11d) | 2025-03-07 → 2025-03-20 (+13d) |  |  |

## Version 5 (saved 2025-02-12)

Last finish stays 2025-08-29.

Added:

| ID | Task | Duration | Start | Finish |
| --- | --- | --- | --- | --- |
| 50 | 触发器系统的实现（待确认其排期） | 20d | 2025-03-17 | 2025-04-11 |

Removed: 50 触发器系统的实现
